# Metasepi Project

Schedule from Planner, 2014-05-12 to 2014-10-21.

## Calendars

- デフォルト: Mon-Fri 08:00-12:00, 13:00-17:00; Sat-Sun off.

## Schedule

| ID | WBS | Task | Type | Duration | Start | Finish | Predecessors | Constraint | Work |
| --- | --- | --- | --- | --- | --- | --- | --- | --- | --- |
| 1 | 1 | **Translate ATS doc** |  |  | 2014-05-12 | 2014-06-24 |  |  | 251.25h |
| 2 | 1.1 | INT2PROGINATS |  |  | 2014-05-12 | 2014-06-02 |  |  | 128h |
| 3 | 1.2 | ATS2TUTORIAL |  |  | 2014-06-03 | 2014-06-24 | 2 |  | 123.25h |
| 4 | 2 | **ATS demo on tiny CPU** |  |  | 2014-06-03 | 2014-07-28 | 2 |  | 320h |
| 5 | 2.1 | AVR support to ATS |  |  | 2014-06-03 | 2014-06-30 |  |  | 160h |
| 6 | 2.2 | ARM support to ATS |  |  | 2014-07-01 | 2014-07-28 | 5 |  | 160h |
| 7 | 3 | OSC@Nagoya | milestone | 0d | 2014-07-04 | 2014-07-04 | 5 | must start on 2014-07-04 |  |
| 8 | 4 | OSC@Kansai | milestone | 0d | 2014-08-01 | 2014-08-01 | 6 | must start on 2014-08-01 |  |
| 9 | 5 | ATS OS X installer |  |  | 2014-07-29 | 2014-08-06 | 6 |  | 56h |
| 10 | 6 | ATS Windows installer |  |  | 2014-08-07 | 2014-09-03 | 9 |  | 160h |
| 11 | 7 | **Ready up Functional IoT** |  |  | 2014-09-04 | 2014-10-21 | 10 |  | 272h |
| 12 | 7.1 | Make up ethernet board |  |  | 2014-09-04 | 2014-09-12 |  | start no earlier than 2014-06-01 | 56h |
| 13 | 7.2 | STM32 Ethernet test |  |  | 2014-09-15 | 2014-09-23 | 12 |  | 56h |
| 14 | 7.3 | gdbserver test |  |  | 2014-09-24 | 2014-10-02 | 13 |  | 56h |
| 15 | 7.4 | Write manual |  |  | 2014-10-03 | 2014-10-21 | 14 |  | 104h |
| 16 | 7.5 | Meetup at Nagoya | milestone | 0d | 2014-10-21 | 2014-10-21 | 15 |  |  |
| 17 | 8 | **ATS snatches NetBSD** |  |  | 2014-07-29 | 2014-09-08 | 6 |  | 240h |
| 18 | 8.1 | Setup raspberrypi |  |  | 2014-07-29 | 2014-08-18 |  |  | 120h |
| 19 | 8.2 | Choose snatch target |  |  | 2014-08-19 | 2014-09-01 | 18 |  | 80h |
| 20 | 8.3 | Setup ATS config |  |  | 2014-09-02 | 2014-09-08 | 19 |  | 40h |
